# Web数据库应用系统

Schedule from MS Project, 2023-12-27 to 2024-04-11, costs in ¥.

## Calendars

- 标准: Mon-Fri 08:00-12:00, 13:00-17:00; Sat-Sun off. Exceptions (off unless hours are given): 2023-12-30 to 2024-01-05 (元旦假期), 2024-01-06 to 2024-01-07 08:00-12:00, 13:00-17:00 (调休加班).
- 加班: Mon-Fri 08:00-12:00, 13:00-17:00; Sat-Sun off. Exceptions (off unless hours are given): 2023-12-30 to 2024-01-05 (元旦假期), 2024-01-06 to 2024-01-07 08:00-12:00, 13:00-17:00 (调休加班), 2024-02-10 to 2024-02-11 08:00-12:00, 13:00-17:00 (加班).

## Resources

| Resource | Unit | Rate |
| --- | --- | --- |
| 数据库设计师 |  | 60 |
| 业务分析师 |  | 60 |
| 张一 |  | 50 |
| 张二 |  | 50 |
| 张三 |  | 50 |
| 系统设计师 |  | 60 |
| 前端开发人员 |  | 50 |
| 测试人员 |  | 50 |
| 运维人员1 |  | 50 |
| 运维人员2 |  | 50 |
| 开发人员1 |  | 50 |
| 开发人员2 |  | 50 |
| 纸张 | 包 | 20 |
| 电脑 | 台 | 8000 |
| 差旅费 |  |  |
| 预算 |  |  |

## Schedule

| ID | WBS | Task | Type | Duration | Start | Finish | Predecessors | Total slack | Calendar | Resources | Work | Cost |
| --- | --- | --- | --- | --- | --- | --- | --- | --- | --- | --- | --- | --- |
| 1 | 1 | **需求分析阶段** |  | 14d | 2023-12-27 | 2024-01-18 |  | 0d |  |  | 264h | 15,320 |
| 2 | 1.1 | 需求讨论 |  | 5d | 2023-12-27 | 2024-01-07 |  | 0d |  | 业务分析师; 数据库设计师; 系统设计师; 纸张 [1 包] | 120h | 7,220 |
| 3 | 1.2 | 需求分析 |  | 6d | 2024-01-08 | 2024-01-15 | 2 | 0d |  | 张一; 系统设计师; 业务分析师 | 120h | 6,800 |
| 4 | 1.3 | 拟定需求说明书 |  | 2d | 2024-01-16 | 2024-01-17 | 3 | 0d |  | 张一; 纸张 [1 包] | 16h | 820 |
| 5 | 1.4 | 确定需求说明书 |  | 1d | 2024-01-18 | 2024-01-18 | 4 | 0d |  | 业务分析师 | 8h | 480 |
| 6 | 1.5 | 需求分析结束 | milestone | 0d | 2024-01-18 | 2024-01-18 | 5 | 0d |  |  |  |  |
| 7 | 2 | **概要设计** |  | 7d | 2024-01-19 | 2024-01-29 |  | 0d |  |  | 88h | 4,640 |
| 8 | 2.1 | 概要设计 |  | 4d | 2024-01-19 | 2024-01-24 | 6 | 0d |  | 开发人员1; 开发人员2 | 64h | 3,200 |
| 9 | 2.2 | 概要评审 |  | 2d | 2024-01-25 | 2024-01-26 | 8 | 0d |  | 业务分析师 | 16h | 960 |
| 10 | 2.3 | 概要确定 |  | 1d | 2024-01-29 | 2024-01-29 | 9 | 0d |  | 业务分析师 | 8h | 480 |
| 11 | 2.4 | 概要设计结束 | milestone | 0d | 2024-01-29 | 2024-01-29 | 10 | 0d |  |  |  |  |
| 12 | 3 | **数据库设计** |  | 5d | 2024-01-30 | 2024-02-05 |  | 0d |  |  | 72h | 4,000 |
| 13 | 3.1 | 数据库元素设计 |  | 1d | 2024-01-30 | 2024-01-30 | 11 | 0d |  | 数据库设计师 | 8h | 480 |
| 14 | 3.2 | 数据表开发 |  | 3d | 2024-01-31 | 2024-02-02 | 13 | 0d |  | 数据库设计师; 张二 | 48h | 2,640 |
| 15 | 3.3 | 数据填入及测试 |  | 1d | 2024-02-05 | 2024-02-05 | 14 | 0d |  | 业务分析师; 张二 | 16h | 880 |
| 16 | 3.4 | 数据库设计结束 | milestone | 0d | 2024-02-05 | 2024-02-05 | 15 | 0d |  |  |  |  |
| 17 | 4 | **系统开发** |  | 22d | 2024-02-06 | 2024-03-06 |  | 0d |  |  | 352h | 19,480 |
| 18 | 4.1 | 系统元件设计 |  | 2d | 2024-02-06 | 2024-02-07 | 16 | 0d |  | 系统设计师; 差旅费 [0.1%] | 16h | 1,560 |
| 19 | 4.2 | 系统元件开发 |  | 8d | 2024-02-08 | 2024-02-15 | 18 | 0d | 加班 | 开发人员2; 开发人员1 | 128h | 6,400 |
| 20 | 4.3 | 系统元件评审 |  | 2d | 2024-02-16 | 2024-02-19 | 19 | 0d |  | 业务分析师; 系统设计师 | 32h | 1,920 |
| 21 | 4.4 | 系统元件确定 |  | 1d | 2024-02-20 | 2024-02-20 | 20 | 0d |  | 系统设计师 | 8h | 480 |
| 22 | 4.5 | 系统元件联动设计 |  | 2d | 2024-02-21 | 2024-02-22 | 21 | 0d |  | 系统设计师; 开发人员1 | 32h | 1,760 |
| 23 | 4.6 | 联动开发 |  | 5d | 2024-02-23 | 2024-02-29 | 22 | 0d |  | 开发人员2; 开发人员1 | 80h | 4,000 |
| 24 | 4.7 | 系统元件联动评审 |  | 3d | 2024-03-01 | 2024-03-05 | 23 | 0d |  | 系统设计师; 业务分析师 | 48h | 2,880 |
| 25 | 4.8 | 系统元件联动确定 |  | 1d | 2024-03-06 | 2024-03-06 | 24 | 0d |  | 系统设计师 | 8h | 480 |
| 26 | 4.9 | 系统开发结束 | milestone | 0d | 2024-03-06 | 2024-03-06 | 25 | 0d |  |  |  |  |

| ID | WBS | Task | Type | Duration | Start | Finish | Predecessors | Total slack | Resources | Work | Cost |
| --- | --- | --- | --- | --- | --- | --- | --- | --- | --- | --- | --- |
| 27 | 5 | **前端开发** |  | 11d | 2024-03-07 | 2024-03-21 |  | 0d |  | 152h | 7,620 |
| 28 | 5.1 | 系统分析 |  | 3d | 2024-03-07 | 2024-03-11 | 26 | 0d | 前端开发人员 | 24h | 1,200 |
| 29 | 5.2 | 模块设计 |  | 5d | 2024-03-12 | 2024-03-18 | 28 | 0d | 前端开发人员; 张三 | 80h | 4,000 |
| 30 | 5.3 | 美工设计 |  | 3d | 2024-03-19 | 2024-03-21 | 29 | 0d | 张三; 前端开发人员; 纸张 [1 包] | 48h | 2,420 |
| 31 | 5.4 | 前端开发阶段结束 | milestone | 0d | 2024-03-21 | 2024-03-21 | 30 | 0d |  |  |  |
| 32 | 6 | 测试计划和准备 |  | 2d | 2024-03-22 | 2024-03-25 | 31 | 0d | 测试人员; 张一 | 32h | 1,600 |
| 33 | 7 | **系统测试** |  | 6d | 2024-03-26 | 2024-04-02 |  | 0d |  | 56h | 2,820 |
| 34 | 7.1 | 区块功能测试 |  | 1d | 2024-03-26 | 2024-03-26 | 32 | 0d | 测试人员 | 8h | 400 |
| 35 | 7.2 | 整体功能测试 |  | 3d | 2024-03-27 | 2024-03-29 | 34 | 0d | 测试人员 | 24h | 1,200 |
| 36 | 7.3 | 整体性能测试 |  | 1d | 2024-04-01 | 2024-04-01 | 35 | 0d | 测试人员 | 8h | 400 |
| 37 | 7.4 | 撰写系统测试报告 |  | 1d | 2024-04-02 | 2024-04-02 | 36 | 0d | 测试人员; 张一; 纸张 [1 包] | 16h | 820 |
| 38 | 7.5 | 系统测试结束 | milestone | 0d | 2024-04-02 | 2024-04-02 | 37 | 0d |  |  |  |
| 39 | 8 | 用户验收测试 |  | 1d | 2024-04-03 | 2024-04-03 | 38 | 0d | 运维人员1 | 8h | 400 |
| 40 | 9 | **系统部署和上线** |  | 6d | 2024-04-04 | 2024-04-11 |  | 0d |  | 80h | 21,240 |
| 41 | 9.1 | 撰写用户手册 |  | 3d | 2024-04-04 | 2024-04-08 | 39 | 0d | 运维人员1; 纸张 [2 包] | 24h | 1,240 |
| 42 | 9.2 | 产品部署 |  | 1d | 2024-04-04 | 2024-04-04 | 39 | 2d | 运维人员2; 电脑 [2 台]; 差旅费 [0.1%] | 8h | 16,700 |
| 43 | 9.3 | 员工培训 |  | 3d | 2024-04-09 | 2024-04-11 | 41, 42 | 0d | 运维人员1; 运维人员2; 差旅费 [0.1%] | 48h | 3,300 |
