# 智慧校园访客管理系统开发与部署项目

Schedule from MS Project, 2025-12-11 to 2026-04-04.

## Calendars

- 标准: Mon 08:00-12:00, 13:00-17:00; Tue-Fri 08:00-12:00, 14:00-18:00; Sat-Sun off. Exceptions (off unless hours are given): 2026-01-01 to 2026-01-03 (元旦假期), 2026-01-04 08:00-12:00, 13:00-17:00 (元旦调休), 2026-02-14 08:00-12:00, 13:00-17:00 (春节调休), 2026-02-15 to 2026-02-23 (春节假期), 2026-02-28 08:00-12:00, 13:00-17:00 (春节调休), 2026-03-13 (大型活动校园停工日), 2026-03-21 08:00-12:00, 13:00-17:00 (项目关键节点集中加班日), 2026-04-04 to 2026-04-06 (清明节).
- 系统部署日历: Mon 08:00-12:00, 13:00-17:00; Tue-Fri 08:00-12:00, 14:00-18:00; Sat-Sun off. Exceptions (off unless hours are given): 2026-01-01 to 2026-01-03 (元旦假期), 2026-01-04 08:00-12:00, 13:00-17:00 (元旦调休), 2026-02-14 08:00-12:00, 13:00-17:00 (春节调休), 2026-02-15 to 2026-02-23 (春节假期), 2026-02-28 08:00-12:00, 13:00-17:00 (春节调休), 2026-03-13 (大型活动校园停工日), 2026-03-21 08:00-12:00, 13:00-17:00 (项目关键节点集中加班日), 2026-03-22 to 2026-04-01 08:00-12:00, 13:00-17:00 (部署连贯执行), 2026-04-04 to 2026-04-06 (清明节).
- 安全测试专项任务: Mon 08:00-12:00, 13:00-17:00; Tue-Fri 08:00-12:00, 14:00-18:00; Sat-Sun off. Exceptions (off unless hours are given): 2026-01-01 to 2026-01-03 (元旦假期), 2026-01-04 08:00-12:00, 13:00-17:00 (元旦调休), 2026-02-14 08:00-12:00, 13:00-17:00 (春节调休), 2026-02-15 to 2026-02-23 (春节假期), 2026-02-28 08:00-12:00, 13:00-17:00 (春节调休), 2026-03-06 to 2026-03-09 08:00-12:00, 14:00-18:00 (安全测试), 2026-03-13 (大型活动校园停工日), 2026-03-21 08:00-12:00, 13:00-17:00 (项目关键节点集中加班日), 2026-04-04 to 2026-04-06 (清明节).
- 性能测试与系统压测任务日历: Mon 08:00-12:00, 13:00-17:00; Tue-Fri 08:00-12:00, 14:00-18:00; Sat-Sun off. Exceptions (off unless hours are given): 2026-01-01 to 2026-01-03 (元旦假期), 2026-01-04 08:00-12:00, 13:00-17:00 (元旦调休), 2026-02-14 08:00-12:00, 13:00-17:00 (春节调休), 2026-02-15 to 2026-02-23 (春节假期), 2026-02-28 08:00-12:00, 13:00-17:00 (春节调休), 2026-03-08 to 2026-03-13 08:00-12:00, 13:00-17:00 (性能测试与优化), 2026-03-21 08:00-12:00, 13:00-17:00 (项目关键节点集中加班日), 2026-04-04 to 2026-04-06 (清明节).
- 元旦紧急加班: Mon 08:00-12:00, 13:00-17:00; Tue-Fri 08:00-12:00, 14:00-18:00; Sat-Sun off. Exceptions (off unless hours are given): 2026-01-02 to 2026-01-03 (元旦假期), 2026-01-04 08:00-12:00, 13:00-17:00 (元旦调休), 2026-02-14 08:00-12:00, 13:00-17:00 (春节调休), 2026-02-15 to 2026-02-23 (春节假期), 2026-02-28 08:00-12:00, 13:00-17:00 (春节调休), 2026-03-13 (大型活动校园停工日), 2026-03-21 08:00-12:00, 13:00-17:00 (项目关键节点集中加班日), 2026-04-04 to 2026-04-06 (清明节).

## Resources

| Resource |
| --- |
| 王磊 |
| 李婷 |
| 张伟 |
| 陈峰 |
| 马军 |
| 周敏 |
| 赵强 |
| 刘洋 |
| 黄丽 |
| 孙凯 |

## Schedule

| ID | WBS | Task | Duration | Start | Finish | Predecessors | Total slack | Free slack | Calendar | Resources | Work |
| --- | --- | --- | --- | --- | --- | --- | --- | --- | --- | --- | --- |
| 1 | 1 | **项目立项与需求阶段** | 17d | 2025-12-11 | 2026-01-05 |  | 0d |  |  |  | 160h |
| 2 | 1.1 | **项目立项与可行性分析** | 5d | 2025-12-11 | 2025-12-17 |  | 1d |  |  |  | 48h |
| 3 | 1.1.1 | 项目立项与目标确认 | 2d | 2025-12-11 | 2025-12-12 |  | 1d | 0d |  | 王磊 | 16h |
| 4 | 1.1.2 | 可行性分析（技术、成本、风险） | 3d | 2025-12-15 | 2025-12-17 | 3 | 1d | 0d |  | 王磊; 李婷 | 32h |
| 5 | 1.2 | **项目启动与需求获取** | 6d | 2025-12-18 | 2025-12-25 |  | 1d |  |  |  | 64h |
| 6 | 1.2.1 | 项目启动会议 | 2d | 2025-12-18 | 2025-12-19 | 4 | 1d | 0d |  | 李婷; 王磊 | 32h |
| 7 | 1.2.2 | 用户调研与需求收集 | 4d | 2025-12-22 | 2025-12-25 | 6 | 1d | 0d |  | 李婷 | 32h |
| 8 | 1.3 | **需求文档编制与确认** | 6d | 2025-12-26 | 2026-01-05 |  | 0d |  |  |  | 48h |
| 9 | 1.3.1 | 编写需求规格说明书 | 4d | 2025-12-26 | 2025-12-31 | 7 | 1d | 0d | 元旦紧急加班 | 陈峰 | 32h |
| 10 | 1.3.2 | 需求评审与需求冻结 | 2d | 2026-01-04 | 2026-01-05 | 9 | 0d |  |  | 李婷 | 16h |
| 11 | 2 | **系统设计阶段** | 13d | 2026-01-06 | 2026-01-22 |  | 0d |  |  |  | 200h |
| 12 | 2.1 | **系统总体设计** | 13d | 2026-01-06 | 2026-01-22 |  | 0d |  |  |  | 88h |
| 13 | 2.1.1 | 系统总体架构设计 | 4d | 2026-01-06 | 2026-01-09 | 10 | 0d |  |  | 李婷; 张伟 | 64h |
| 14 | 2.1.2 | 数据库与数据字典设计 | 3d | 2026-01-12 | 2026-01-22 | 13 | 47d |  |  | 张伟 | 24h |
| 15 | 2.2 | **安全与权限设计** | 3d | 2026-01-12 | 2026-01-14 |  |  |  |  |  | 24h |
| 16 | 2.2.1 | 系统安全方案设计 | 3d | 2026-01-12 | 2026-01-14 | 13 | 0d |  |  | 马军 | 24h |
| 17 | 2.3 | **界面与交互设计** | 7d | 2026-01-06 | 2026-01-14 |  | 10d |  |  |  | 88h |
| 18 | 2.3.1 | UI 原型与交互设计 | 5d | 2026-01-06 | 2026-01-12 | 10 | 10d | 0d |  | 周敏 | 40h |
| 19 | 2.3.2 | 原型评审与设计确认 | 2d | 2026-01-13 | 2026-01-14 | 18 | 10d | 0d |  | 陈峰; 王磊; 周敏 | 48h |
| 20 | 3 | **系统开发阶段** | 23d | 2026-01-14 | 2026-02-14 |  | 0.12d |  |  |  | 504h |
| 21 | 3.1 | **后端核心功能开发** | 13d | 2026-01-14 | 2026-02-02 |  | 0.12d |  |  |  | 152h |
| 22 | 3.1.1 | 用户与角色权限模块开发 | 6d | 2026-01-14 | 2026-01-22 | 13, 16 | 0.12d | 0d |  | 张伟; 赵强 | 96h |
| 23 | 3.1.2 | 访客预约与审批模块开发 | 7d | 2026-01-22 | 2026-02-02 | 22 | 0.12d | 0d |  | 赵强 | 56h |
| 24 | 3.2 | **后端扩展模块开发** | 5d | 2026-02-02 | 2026-02-09 |  | 0.12d |  |  |  | 72h |
| 25 | 3.2.1 | 门禁与设备接口模块开发 | 5d | 2026-02-02 | 2026-02-09 | 23 | 0.12d | 0d |  | 张伟 | 40h |
| 26 | 3.2.2 | 日志记录与数据统计模块开发 | 4d | 2026-02-02 | 2026-02-06 | 23 | 1.12d | 1d |  | 赵强 | 32h |

| ID | WBS | Task | Duration | Start | Finish | Predecessors | Total slack | Free slack | Calendar | Resources | Work |
| --- | --- | --- | --- | --- | --- | --- | --- | --- | --- | --- | --- |
| 27 | 3.3 | **前端功能开发** | 8d | 2026-01-15 | 2026-01-26 |  | 10d |  |  |  | 120h |
| 28 | 3.3.1 | 管理端 Web 页面开发 | 8d | 2026-01-15 | 2026-01-26 | 19 | 10d | 9.88d |  | 陈峰 | 64h |
| 29 | 3.3.2 | 移动端访客预约页面开发 | 7d | 2026-01-15 | 2026-01-23 | 19 | 11d | 10.88d |  | 刘洋 | 56h |
| 30 | 3.4 | **系统集成** | 5d | 2026-02-09 | 2026-02-14 |  | 0.12d |  |  |  | 160h |
| 31 | 3.4.1 | 系统功能集成与联调 | 5d | 2026-02-09 | 2026-02-14 | 25, 26, 28, 29 | 0.12d |  |  | 张伟; 赵强; 陈峰; 刘洋 | 160h |
| 32 | 4 | **测试与优化阶段** | 10d | 2026-02-15 | 2026-03-06 |  | 0d |  |  |  | 168h |
| 33 | 4.1 | **测试准备** | 0d | 2026-02-15 | 2026-02-17 |  | 0d |  |  |  | 24h |
| 34 | 4.1.1 | 编写系统测试计划与测试用例 | 3d | 2026-02-15 | 2026-02-17 | 31 | 0d |  |  | 黄丽 | 24h |
| 35 | 4.2 | **系统测试** | 3d | 2026-02-18 | 2026-02-26 |  | 0d |  |  |  | 64h |
| 36 | 4.2.1 | 功能测试 | 5d | 2026-02-18 | 2026-02-22 | 34 | 0d |  |  | 黄丽 | 40h |
| 37 | 4.2.2 | 安全测试与权限校验 | 3d | 2026-02-24 | 2026-02-26 | 36 | 0d |  | 安全测试专项任务 | 马军 | 24h |
| 38 | 4.3 | **优化与稳定** | 7d | 2026-02-27 | 2026-03-06 |  | 0d |  |  |  | 80h |
| 39 | 4.3.1 | 性能测试与系统优化 | 4d | 2026-02-27 | 2026-03-03 | 37 | 0d |  | 性能测试与系统压测任务日历 | 张伟 | 32h |
| 40 | 4.3.2 | 缺陷修复与版本稳定 | 3d | 2026-03-04 | 2026-03-06 | 39 | 0d |  |  | 张伟; 赵强 | 48h |
| 41 | 5 | **部署、培训与收尾阶段** | 20d | 2026-03-09 | 2026-04-04 |  | 0d |  |  |  | 307h |
| 42 | 5.1 | **系统部署** | 8d | 2026-03-09 | 2026-03-19 |  | 0d |  |  |  | 88h |
| 43 | 5.1.1 | 部署环境准备与服务器配置 | 3d | 2026-03-09 | 2026-03-11 | 40 | 0d |  | 系统部署日历 | 孙凯 | 24h |
| 44 | 5.1.2 | 系统正式部署 | 3d | 2026-03-12 | 2026-03-17 | 43 | 0d |  | 系统部署日历 | 孙凯; 张伟 | 48h |
| 45 | 5.1.3 | 数据初始化与备份策略配置 | 2d | 2026-03-18 | 2026-03-19 | 44 | 0d |  | 系统部署日历 | 孙凯 | 16h |
| 46 | 5.2 | **培训与验收** | 9d | 2026-03-20 | 2026-03-31 |  | 0d |  |  |  | 180h |
| 47 | 5.2.1 | 用户培训与操作指导 | 3d | 2026-03-20 | 2026-03-23 | 45 | 0d |  |  | 王磊; 李婷 | 48h |
| 48 | 5.2.2 | 系统试运行 | 5d | 2026-03-24 | 2026-03-28 | 47 | 0d |  |  | 王磊; 孙凯; 黄丽 | 100h |
| 49 | 5.2.3 | 项目验收 | 2d | 2026-03-30 | 2026-03-31 | 48 | 0d |  |  | 王磊; 李婷 | 32h |
| 50 | 5.3 | **项目收尾** | 3d | 2026-04-01 | 2026-04-04 |  | 0d |  |  |  | 39h |
| 51 | 5.3.1 | 项目文档整理与归档 | 2d | 2026-04-01 | 2026-04-02 | 49 | 0d |  |  | 李婷 | 16h |
| 52 | 5.3.2 | 运维交接与结项报告 | 2d | 2026-04-03 | 2026-04-04 | 51 | 0d |  |  | 孙凯; 王磊 | 23h |
